# lab2upsis

Schedule from ProjectLibre, 2026-09-01 to 2027-02-02.

## Calendars

- Пятидневка: Mon-Fri 08:00-12:00, 13:00-17:00; Sat-Sun off.

## Resources

| Resource |
| --- |
| Не назначено |
| Тимлид |
| Системный аналитик |
| Архитектор |
| Data Scientist |
| Frontend-разработчик |
| DevOps |
| QA-инженер |

## Schedule

| ID | WBS | Task | Type | Duration | Start | Finish | Predecessors | Constraint | Resources |
| --- | --- | --- | --- | --- | --- | --- | --- | --- | --- |
| 1 | 1 | **Управление проектом** |  | 93d | 2026-09-01 | 2027-01-07 |  |  |  |
| 2 | 1.1 | Планирование и координация команды |  | 15d | 2026-09-01 | 2026-09-21 | 6SS, 27FF | start no later than 2026-09-01 | Тимлид |
| 3 | 1.2 | Управление рисками и коммуникация с заказчиками |  | 10d | 2026-09-01 | 2026-09-14 | 2SS |  | Тимлид |
| 4 | 1.3 | Подготовка отчетной документации |  | 3d | 2027-01-05 | 2027-01-07 | 8, 10FF, 15FF, 25SF |  | Тимлид |
| 5 | 2 | **Анализ и обследование** |  | 10d | 2026-09-01 | 2026-09-14 |  |  |  |
| 6 | 2.1 | Изучение производственных и логистических процессов |  | 5d | 2026-09-01 | 2026-09-07 |  |  | Системный аналитик |
| 7 | 2.2 | Сбор требований к функционалу |  | 5d | 2026-09-03 | 2026-09-09 | 6SS+2d |  | Системный аналитик |
| 8 | 2.3 | Формирование технического задания (ТЗ) |  | 5d | 2026-09-08 | 2026-09-14 | 6, 7SS+3d |  | Системный аналитик |
| 9 | 3 | ТЗ Утверждено | milestone | 0d | 2026-09-14 | 2026-09-14 | 8 |  |  |
| 10 | 4 | **Проектирование** |  | 10d | 2026-09-15 | 2026-09-28 |  |  |  |
| 11 | 4.1 | Проектирование архитектуры и интеграционного слоя |  | 10d | 2026-09-15 | 2026-09-28 | 8 |  | Архитектор |
| 12 | 4.2 | Проектирование экономической модели |  | 2.5d | 2026-09-15 | 2026-09-17 | 8 |  | Системный аналитик [200%] |
| 13 | 4.3 | Разработка математических моделей оптимизации |  | 10d | 2026-09-15 | 2026-09-28 | 8 |  | Data Scientist |
| 14 | 4.4 | Проектирование завершено |  | 0d | 2026-09-28 | 2026-09-28 | 11, 12, 13 |  |  |
| 15 | 5 | **Разработка и интеграция** |  | 53d | 2026-09-29 | 2026-12-10 |  |  |  |
| 16 | 5.1 | Разработка интеграционного слоя |  | 25d | 2026-09-29 | 2026-11-02 | 11 |  | Архитектор |
| 17 | 5.2 | Разработка слоя хранения данных (MDM/DWH) |  | 15d | 2026-09-29 | 2026-10-19 | 13, 11, 12 |  | Архитектор |
| 18 | 5.3 | Реализация модуля экономической модели |  | 15d | 2026-10-20 | 2026-11-09 | 17, 12 |  | Архитектор |
| 19 | 5.4 | Реализация модуля ИИ-планирования (сценарии) |  | 25d | 2026-10-02 | 2026-11-05 | 17SS+3d, 13SS+3d |  | Data Scientist |
| 20 | 5.5 | Разработка веб-интерфейсов и панелей |  | 23d | 2026-11-10 | 2026-12-10 | 19, 18 |  | Frontend-разработчик |
| 21 | 5.6 | MVP завершен |  | 0d | 2026-12-10 | 2026-12-10 | 16, 17, 18, 19, 20 |  |  |
| 22 | 6 | **Тестирование и внедрение** |  | 83d | 2026-09-29 | 2027-01-21 |  |  |  |
| 23 | 6.1 | Настройка тестовых сред (инфраструктура) |  | 8d | 2026-09-29 | 2026-10-08 | 11 |  | DevOps |
| 24 | 6.2 | Функциональное и интеграционное тестирование |  | 20d | 2026-12-11 | 2027-01-07 | 23, 20, 16, 17, 18, 19 |  | QA-инженер |
| 25 | 6.3 | Развертывание системы (пилотные внедрения) |  | 10d | 2027-01-08 | 2027-01-21 | 24 |  | DevOps |
| 26 | 6.4 | Пилот запущен |  | 0d | 2027-01-21 | 2027-01-21 | 25 |  |  |
| 27 | 7 | Буферная работа (непредвиденные сбои на пилотах) |  | 8d | 2027-01-22 | 2027-02-02 | 25 |  | DevOps |
| 28 | 8 | Пилот завершен |  | 0d | 2027-02-02 | 2027-02-02 | 27 |  |  |
