# Контур.Supply&Trade - контроль освоенного объема ЛР3

Schedule from ProjectLibre, 2026-09-01 to 2027-02-02, status date 2026-10-10, costs in тыс. руб., A marks actual dates.
ЛР3: отслеживание выполнения проекта методом освоенного объема

## Calendars

- Пятидневка: Mon-Fri 08:00-12:00, 13:00-17:00; Sat-Sun off.

## Resources

| Resource |
| --- |
| Не назначено |
| Руководитель проекта / тимлид |
| Системный аналитик |
| Архитектор / Backend / Data Engineer |
| Data Scientist / ML-специалист |
| Frontend-разработчик |
| DevOps / инженер по интеграции |
| QA-инженер |

## Schedule

| ID | WBS | Task | Type | Duration | Start | Finish | Predecessors | Complete | Remaining | Actual start | Baseline start | Baseline finish | Baseline duration | Constraint | Resources | Cost | Baseline cost | Actual cost | PV / BCWS, тыс. руб. | EV / BCWP, тыс. руб. | AC / ACWP, тыс. руб. | CV, тыс. руб. | SV, тыс. руб. | CPI | SPI | EAC / ETC / VAC |
| --- | --- | --- | --- | --- | --- | --- | --- | --- | --- | --- | --- | --- | --- | --- | --- | --- | --- | --- | --- | --- | --- | --- | --- | --- | --- | --- |
| 1 | 1 | **Управление проектом** |  | 93d | 2026-09-01 A | 2027-01-07 |  | 35% | 60.5d |  | 2026-09-01 | 2027-01-07 | 93d |  |  | 15 | 15 | 5.6 | 457,03 | 525 | 560 | -35 | 67,97 | 0,94 | 1,15 | EAC 1 600; ETC 1 040; VAC -100 |
| 2 | 1.1 | Планирование и координация команды |  | 15d | 2026-09-01 A | 2026-09-21 A | 6SS, 27FF | 100% |  |  | 2026-09-01 | 2026-09-21 | 15d | start no later than 2026-09-01 | Руководитель проекта / тимлид | 8.04 | 8.04 | 3 | 803,57 | 803,57 | 300 | 503,57 |  | 2,68 | 1,00 | EAC 300; ETC 0; VAC 503,57 |
| 3 | 1.2 | Управление рисками и коммуникация с заказчиками |  | 10d | 2026-09-01 A | 2026-09-14 | 2SS | 50% | 5d |  | 2026-09-01 | 2026-09-14 | 10d |  | Руководитель проекта / тимлид | 5.36 | 5.36 | 2 | 535,71 | 267,86 | 200 | 67,86 | -267,86 | 1,34 | 0,50 | EAC 400; ETC 200; VAC 135,71 |
| 4 | 1.3 | Подготовка отчетной документации |  | 3d | 2027-01-05 | 2027-01-07 | 8, 10FF, 15FF, 25SF |  |  |  | 2027-01-05 | 2027-01-07 | 3d |  | Руководитель проекта / тимлид | 1.61 | 1.61 | 0.6 |  |  | 60 | -60 |  |  |  | EAC 0; ETC 100,71; VAC 0 |
| 5 | 2 | **Анализ и обследование** |  | 10d | 2026-09-01 A | 2026-09-14 A |  | 100% |  |  | 2026-09-01 | 2026-09-14 | 10d |  |  | 9 | 9 | 9.3 | 900 | 900 | 930 | -30 |  | 0,97 | 1,00 | EAC 930; ETC 0; VAC -30 |
| 6 | 2.1 | Изучение производственных и логистических процессов |  | 5d | 2026-09-01 A | 2026-09-07 A |  | 100% |  |  | 2026-09-01 | 2026-09-07 | 5d |  | Системный аналитик | 3 | 3 | 3.1 | 300 | 300 | 310 | -10 |  | 0,97 | 1,00 | EAC 310; ETC 0; VAC -10 |
| 7 | 2.2 | Сбор требований к функционалу |  | 5d | 2026-09-03 A | 2026-09-09 A | 6SS+2d | 100% |  |  | 2026-09-03 | 2026-09-09 | 5d |  | Системный аналитик | 3 | 3 | 3.1 | 300 | 300 | 310 | -10 |  | 0,97 | 1,00 | EAC 310; ETC 0; VAC -10 |
| 8 | 2.3 | Формирование технического задания (ТЗ) |  | 5d | 2026-09-08 A | 2026-09-14 A | 6, 7SS+3d | 100% |  |  | 2026-09-08 | 2026-09-14 | 5d |  | Системный аналитик | 3 | 3 | 3.1 | 300 | 300 | 310 | -10 |  | 0,97 | 1,00 | EAC 310; ETC 0; VAC -10 |
| 9 | 3 | ТЗ Утверждено | milestone | 0d | 2026-09-14 A | 2026-09-14 A | 8 | 100% |  |  | 2026-09-14 | 2026-09-14 | 0d |  |  |  |  |  |  |  |  |  |  |  |  | EAC 0; ETC 0; VAC 0 |
| 10 | 4 | **Проектирование** |  | 10d | 2026-09-15 A | 2026-09-28 |  | 50% | 5d |  | 2026-09-15 | 2026-09-28 | 10d |  |  | 13 | 13 | 7.2 | 1 300 | 650 | 720 | -70 | -650 | 0,90 | 0,50 | EAC 1 440; ETC 720; VAC -140 |
| 11 | 4.1 | Проектирование архитектуры и интеграционного слоя |  | 10d | 2026-09-15 A | 2026-09-28 | 8 | 50% | 5d |  | 2026-09-15 | 2026-09-28 | 10d |  | Архитектор / Backend / Data Engineer | 5.78 | 5.78 | 3.2 | 577,78 | 288,89 | 320 | -31,11 | -288,89 | 0,90 | 0,50 | EAC 640; ETC 320; VAC -62,22 |
| 12 | 4.2 | Проектирование экономической модели |  | 2.5d | 2026-09-15 A | 2026-09-17 | 8 | 50% | 1.25d |  | 2026-09-15 | 2026-09-17 | 2.5d |  | Системный аналитик [200%] | 1.44 | 1.44 | 0.8 | 144,44 | 72,22 | 80 | -7,78 | -72,22 | 0,90 | 0,50 | EAC 160; ETC 80; VAC -15,56 |
| 13 | 4.3 | Разработка математических моделей оптимизации |  | 10d | 2026-09-15 A | 2026-09-28 | 8 | 50% | 5d |  | 2026-09-15 | 2026-09-28 | 10d |  | Data Scientist / ML-специалист | 5.78 | 5.78 | 3.2 | 577,78 | 288,89 | 320 | -31,11 | -288,89 | 0,90 | 0,50 | EAC 640; ETC 320; VAC -62,22 |
| 14 | 4.4 | Проектирование завершено |  | 0d | 2026-09-28 | 2026-09-28 | 11, 12, 13 |  |  |  | 2026-09-28 | 2026-09-28 | 0d |  |  |  |  |  |  |  |  |  |  |  |  | EAC 0; ETC 0; VAC 0 |
| 15 | 5 | **Разработка и интеграция** |  | 53d | 2026-09-29 A | 2026-12-10 |  | 25% | 39.75d |  | 2026-09-29 | 2026-12-10 | 53d |  |  | 57 | 57 | 15 | 870,83 | 1 425 | 1 500 | -75 | 554,17 | 0,95 | 1,64 | EAC 6 000; ETC 4 500; VAC -300 |
| 16 | 5.1 | Разработка интеграционного слоя |  | 25d | 2026-09-29 A | 2026-11-02 | 11 | 25% | 18.75d |  | 2026-09-29 | 2026-11-02 | 25d |  | Архитектор / Backend / Data Engineer | 13.83 | 13.83 | 3.64 | 457,81 | 345,87 | 364,08 | -18,20 | -111,94 | 0,95 | 0,76 | EAC 1 456,31; ETC 1 092,23; VAC -72,82 |
| 17 | 5.2 | Разработка слоя хранения данных (MDM/DWH) |  | 15d | 2026-09-29 A | 2026-10-19 | 13, 11, 12 | 25% | 11.25d |  | 2026-09-29 | 2026-10-19 | 15d |  | Архитектор / Backend / Data Engineer | 8.3 | 8.3 | 2.18 | 463,43 | 207,52 | 218,45 | -10,92 | -255,90 | 0,95 | 0,45 | EAC 873,79; ETC 655,34; VAC -43,69 |
| 18 | 5.3 | Реализация модуля экономической модели |  | 15d | 2026-10-20 | 2026-11-09 | 17, 12 |  |  |  | 2026-10-20 | 2026-11-09 | 15d |  | Архитектор / Backend / Data Engineer | 8.3 | 8.3 | 2.18 |  |  | 218,45 | -218,45 |  |  |  | EAC 0; ETC 611,65; VAC 0 |
| 19 | 5.4 | Реализация модуля ИИ-планирования (сценарии) |  | 25d | 2026-10-02 A | 2026-11-05 | 17SS+3d, 13SS+3d | 25% | 18.75d |  | 2026-10-02 | 2026-11-05 | 25d |  | Data Scientist / ML-специалист | 13.83 | 13.83 | 3.64 | 337,07 | 345,87 | 364,08 | -18,20 | 8,80 | 0,95 | 1,03 | EAC 1 456,31; ETC 1 092,23; VAC -72,82 |
| 20 | 5.5 | Разработка веб-интерфейсов и панелей |  | 23d | 2026-11-10 | 2026-12-10 | 19, 18 |  |  |  | 2026-11-10 | 2026-12-10 | 23d |  | Frontend-разработчик | 12.73 | 12.73 | 3.35 |  |  | 334,95 | -334,95 |  |  |  | EAC 0; ETC 937,86; VAC 0 |
| 21 | 5.6 | MVP завершен |  | 0d | 2026-12-10 | 2026-12-10 | 16, 17, 18, 19, 20 |  |  |  | 2026-12-10 | 2026-12-10 | 0d |  |  |  |  |  |  |  |  |  |  |  |  | EAC 0; ETC 0; VAC 0 |
| 22 | 6 | **Тестирование и внедрение** |  | 83d | 2026-09-29 A | 2027-01-21 |  | 12% | 73d |  | 2026-09-29 | 2027-01-21 | 83d |  |  | 22 | 22 | 2.8 | 212,28 | 264 | 280 | -16 | 51,72 | 0,94 | 1,24 | EAC 2 333,33; ETC 2 053,33; VAC -133,33 |
| 23 | 6.1 | Настройка тестовых сред (инфраструктура) |  | 8d | 2026-09-29 A | 2026-10-08 A | 11 | 100% |  |  | 2026-09-29 | 2026-10-08 | 8d |  | DevOps / инженер по интеграции | 4.63 | 4.63 | 0.59 | 463,16 | 463,16 | 58,95 | 404,21 |  | 7,86 | 1,00 | EAC 58,95; ETC 0; VAC 404,21 |
| 24 | 6.2 | Функциональное и интеграционное тестирование |  | 20d | 2026-12-11 | 2027-01-07 | 23, 20, 16, 17, 18, 19 |  |  |  | 2026-12-11 | 2027-01-07 | 20d |  | QA-инженер | 11.58 | 11.58 | 1.47 |  |  | 147,37 | -147,37 |  |  |  | EAC 0; ETC 1 010,53; VAC 0 |
| 25 | 6.3 | Развертывание системы (пилотные внедрения) |  | 10d | 2027-01-08 | 2027-01-21 | 24 |  |  |  | 2027-01-08 | 2027-01-21 | 10d |  | DevOps / инженер по интеграции | 5.79 | 5.79 | 0.74 |  |  | 73,68 | -73,68 |  |  |  | EAC 0; ETC 505,26; VAC 0 |
| 26 | 6.4 | Пилот запущен |  | 0d | 2027-01-21 | 2027-01-21 | 25 |  |  |  | 2027-01-21 | 2027-01-21 | 0d |  |  |  |  |  |  |  |  |  |  |  |  | EAC 0; ETC 0; VAC 0 |
| 27 | 7 | Буферная работа (непредвиденные сбои на пилотах) |  | 8d | 2027-01-22 | 2027-02-02 | 25 | 50% | 4d | 2026-10-10 | 2027-01-22 | 2027-02-02 | 8d |  | DevOps / инженер по интеграции | 4 | 4 | 2.5 |  | 200 | 250 | -50 | 200 | 0,80 |  | EAC 500; ETC 250; VAC -100 |
| 28 | 8 | Пилот завершен |  | 0d | 2027-02-02 | 2027-02-02 | 27 |  |  |  | 2027-02-02 | 2027-02-02 | 0d |  |  |  |  |  |  |  |  |  |  |  |  | EAC 0; ETC 0; VAC 0 |

Notes:
- 1: Процент и состояние по методичке: 35 %; работа уже началась, срок окончания еще не наступил / Отчеты EVM: Освоенный объем; Индикаторы календарного плана; Параметры затрат
- 2: Процент и состояние по методичке: 100 %; работа уже началась, срок окончания еще не наступил / Отчеты EVM: Освоенный объем; Индикаторы календарного плана; Параметры затрат
- 3: Процент и состояние по методичке: 50 %; работа уже началась, срок окончания еще не наступил / Отчеты EVM: Освоенный объем; Индикаторы календарного плана; Параметры затрат
- 4: Процент и состояние по методичке: 0 %; работа уже началась, срок окончания еще не наступил / Отчеты EVM: Освоенный объем; Индикаторы календарного плана; Параметры затрат
- 5: Процент и состояние по методичке: 100 %; срок выполнения истек, работа выполнена полностью / Отчеты EVM: Освоенный объем; Индикаторы календарного плана; Параметры затрат
- 6: Процент и состояние по методичке: 100 %; срок выполнения истек, работа выполнена полностью / Отчеты EVM: Освоенный объем; Индикаторы календарного плана; Параметры затрат
- 7: Процент и состояние по методичке: 100 %; срок выполнения истек, работа выполнена полностью / Отчеты EVM: Освоенный объем; Индикаторы календарного плана; Параметры затрат
- 8: Процент и состояние по методичке: 100 %; срок выполнения истек, работа выполнена полностью / Отчеты EVM: Освоенный объем; Индикаторы календарного плана; Параметры затрат
- 9: Процент и состояние по методичке: 100 %; контрольная веха завершена / Отчеты EVM: Освоенный объем; Индикаторы календарного плана; Параметры затрат
- 10: Процент и состояние по методичке: 50 %; срок выполнения истек, работа выполнена на 50% / Отчеты EVM: Освоенный объем; Индикаторы календарного плана; Параметры затрат
- 11: Процент и состояние по методичке: 50 %; срок выполнения истек, работа выполнена на 50% / Отчеты EVM: Освоенный объем; Индикаторы календарного плана; Параметры затрат
- 12: Процент и состояние по методичке: 50 %; срок выполнения истек, работа выполнена на 50% / Отчеты EVM: Освоенный объем; Индикаторы календарного плана; Параметры затрат
- 13: Процент и состояние по методичке: 50 %; срок выполнения истек, работа выполнена на 50% / Отчеты EVM: Освоенный объем; Индикаторы календарного плана; Параметры затрат
- 14: Процент и состояние по методичке: 0 %; срок выполнения истек, работа выполнена на 50% / Отчеты EVM: Освоенный объем; Индикаторы календарного плана; Параметры затрат
- 15: Процент и состояние по методичке: 25 %; работа уже началась, срок окончания еще не наступил / Отчеты EVM: Освоенный объем; Индикаторы календарного плана; Параметры затрат
- 16: Процент и состояние по методичке: 25 %; работа уже началась, срок окончания еще не наступил / Отчеты EVM: Освоенный объем; Индикаторы календарного плана; Параметры затрат
- 17: Процент и состояние по методичке: 25 %; работа уже началась, срок окончания еще не наступил / Отчеты EVM: Освоенный объем; Индикаторы календарного плана; Параметры затрат
- 18: Процент и состояние по методичке: 0 %; работа уже началась, срок окончания еще не наступил / Отчеты EVM: Освоенный объем; Индикаторы календарного плана; Параметры затрат
- 19: Процент и состояние по методичке: 25 %; работа уже началась, срок окончания еще не наступил / Отчеты EVM: Освоенный объем; Индикаторы календарного плана; Параметры затрат
- 20: Процент и состояние по методичке: 0 %; работа уже началась, срок окончания еще не наступил / Отчеты EVM: Освоенный объем; Индикаторы календарного плана; Параметры затрат
- 21: Процент и состояние по методичке: 0 %; работа уже началась, срок окончания еще не наступил / Отчеты EVM: Освоенный объем; Индикаторы календарного плана; Параметры затрат
- 22: Процент и состояние по методичке: 12 %; работа уже началась, срок окончания еще не наступил / Отчеты EVM: Освоенный объем; Индикаторы календарного плана; Параметры затрат
- 23: Процент и состояние по методичке: 100 %; работа уже началась, срок окончания еще не наступил / Отчеты EVM: Освоенный объем; Индикаторы календарного плана; Параметры затрат
- 24: Процент и состояние по методичке: 0 %; работа уже началась, срок окончания еще не наступил / Отчеты EVM: Освоенный объем; Индикаторы календарного плана; Параметры затрат
- 25: Процент и состояние по методичке: 0 %; работа уже началась, срок окончания еще не наступил / Отчеты EVM: Освоенный объем; Индикаторы календарного плана; Параметры затрат
- 26: Процент и состояние по методичке: 0 %; работа уже началась, срок окончания еще не наступил / Отчеты EVM: Освоенный объем; Индикаторы календарного плана; Параметры затрат
- 27: Процент и состояние по методичке: 50 %; по плану работа еще не началась, но фактически выполнена на 50% / Отчеты EVM: Освоенный объем; Индикаторы календарного плана; Параметры затрат
- 28: Процент и состояние по методичке: 0 %; контрольная веха еще не наступила / Отчеты EVM: Освоенный объем; Индикаторы календарного плана; Параметры затрат
